# Stargazer

Schedule from MS Project, 2010-01-06 to 2010-04-07, 4 hours a day, A marks actual dates.
Okanagan College

## Calendars

- Standard: Mon 14:00-16:30; Tue off; Wed 14:30-16:30; Thu 14:30-18:30; Fri-Sun off. Exceptions (off unless hours are given): 2010-04-06 08:00-12:00, 13:00-17:00.

## Resources

| Resource |
| --- |
| Robert |
| Rob |

## Schedule

| ID | WBS | Task | Type | Duration | Start | Finish | Predecessors | Complete | Remaining | Total slack | Free slack | Constraint | Resources | Work | Actual work | Text1 |
| --- | --- | --- | --- | --- | --- | --- | --- | --- | --- | --- | --- | --- | --- | --- | --- | --- |
| 1 | 1 | **Iteration 5: Release #4: Automated Scheduling and Telescope Positioning** |  | 9d | 2010-01-06 14:30 A | 2010-02-04 08:00 |  | 73% | 2.46d | 5.75d | 0d |  |  | 31.75h | 21.15h | 16 |
| 2 | 1.1 | **Web system** |  | 4.62d | 2010-01-06 14:30 A | 2010-01-20 16:00 |  | 79% | 0.97d | 10.12d | 4.38d |  |  | 14.25h | 11.25h | 16 |
| 3 | 1.1.1 | Add new online help documentation to website |  | 3h | 2010-01-11 14:00 A | 2010-01-13 15:00 A |  | 100% |  |  |  | start no earlier than 2010-01-11 08:00 | Robert | 3h | 3h | 12 |
| 4 | 1.1.2 | Fix CSS with mobile devices |  | 15min | 2010-01-07 14:30 A | 2010-01-07 14:45 A |  | 100% |  |  |  | start no earlier than 2010-01-07 08:00 | Rob | 0.25h | 0.25h |  |
| 5 | 1.1.3 | Minor refactoring |  | 1.5h | 2010-01-07 14:30 A | 2010-01-07 16:00 A |  | 100% |  |  |  | start no earlier than 2010-01-07 08:00 | Rob | 1.5h | 1.5h |  |
| 6 | 1.1.4 | Research Rails plugin to handle scheduling |  | 2h | 2010-01-11 14:00 A | 2010-01-11 16:00 A |  | 100% |  |  |  | start no earlier than 2010-01-11 08:00 | Rob | 2h | 2h |  |
| 7 | 1.1.5 | Download and install Oracle 10g XE on telescope server |  | 1.5h | 2010-01-14 14:30 A | 2010-01-14 16:00 A | 6 | 100% |  |  |  | start no earlier than 2010-01-14 08:00 | Rob | 1.5h | 1.5h |  |
| 8 | 1.1.6 | Install Oracle client on web server |  | 1h | 2010-01-06 14:30 | 2010-01-06 15:30 |  |  |  | 14.5d |  |  | Rob | 1h |  |  |
| 9 | 1.1.7 | Configure Rails environment to now use the Oracle 10g XE database |  | 1h | 2010-01-14 16:00 A | 2010-01-14 17:00 A | 7 | 100% |  |  |  | start no earlier than 2010-01-14 08:00 | Rob | 1h | 1h |  |
| 10 | 1.1.8 | Create triggers/batch file to run application |  | 2h | 2010-01-18 16:00 | 2010-01-20 16:00 | 11 |  |  | 10.12d |  |  | Rob | 2h |  |  |
| 11 | 1.1.9 | Test connections and scheduling jobs |  | 2h | 2010-01-18 14:00 A | 2010-01-18 16:00 A | 9 | 100% |  |  |  | start no earlier than 2010-01-18 08:00 | Rob | 2h | 2h |  |
| 12 | 1.2 | **Telescope-controlling application** |  | 3.38d | 2010-01-06 14:30 A | 2010-01-14 17:30 A |  | 100% |  |  |  |  |  | 5h | 5h | 16 |
| 13 | 1.2.1 | Allow for parking the telescope |  | 1h | 2010-01-14 14:30 A | 2010-01-14 15:30 A |  | 100% |  |  |  | start no earlier than 2010-01-14 08:00 | Robert | 1h | 1h |  |
| 14 | 1.2.2 | Allow for telescope movement ability from entered celestial coordinates |  | 2h | 2010-01-14 15:30 A | 2010-01-14 17:30 A | 13 | 100% |  |  |  | start no earlier than 2010-01-14 08:00 | Robert | 2h | 2h |  |
| 15 | 1.2.3 | Test driver for all commands |  | 2h | 2010-01-06 14:30 A | 2010-01-06 16:30 A |  | 100% |  |  |  |  | Robert | 2h | 2h |  |
| 16 | 1.3 | **Documentation** |  | 1.25d | 2010-01-06 14:30 A | 2010-01-07 17:30 |  | 43% | 0.72d | 13.5d | 7.75d |  |  | 12.5h | 4.9h | 16 |
| 17 | 1.3.1 | Documentation updates |  | 5h | 2010-01-06 14:30 A | 2010-01-07 17:30 |  | 34% | 3.3h | 13.5d | 7.75d |  | Rob; Robert | 10h | 3.4h | 20 |
| 18 | 1.3.2 | Metrics gathering |  | 1.5h | 2010-01-06 14:30 A | 2010-01-06 16:00 A |  | 100% |  |  |  |  | Rob | 1.5h | 1.5h |  |
| 19 | 1.3.3 | Draft acceptance test |  | 1h | 2010-01-06 14:30 | 2010-01-06 15:30 |  |  |  | 14.5d |  |  | Rob | 1h |  |  |
| 20 | 1.4 | Release #4: Automated Scheduling and Telescope Positioning | milestone | 0d | 2010-02-04 08:00 | 2010-02-04 08:00 | 2, 12, 16 |  |  | 5.75d | 0d | start no earlier than 2010-02-04 08:00 | Rob; Robert |  |  |  |
| 22 | 2 | **Iteration 6: Release #5: Automated Image Gathering** |  | 4.25d | 2010-02-04 14:30 | 2010-02-18 08:00 | 1 |  |  | 5.75d | 0d |  |  | 75.5h |  | 16 |
| 23 | 2.1 | **Web system** |  | 4.25d | 2010-02-04 14:30 | 2010-02-17 16:30 |  |  |  | 5.75d | 0d |  |  | 23h |  | 16 |
| 24 | 2.1.1 | Integrate libraries (which have celestial objects of interest) to web site |  | 6h | 2010-02-04 14:30 | 2010-02-08 16:00 |  |  |  | 5.75d | 0d |  | Robert; Rob | 12h |  | 24 |
| 25 | 2.1.2 | Add scheduled job for parking telescope |  | 3h | 2010-02-08 16:00 | 2010-02-11 15:00 | 24, 13 |  |  | 5.75d | 0d |  | Rob | 3h |  | 12 |
| 26 | 2.1.3 | Telescope parking completed | milestone | 0d | 2010-02-11 15:00 | 2010-02-11 15:00 | 25 |  |  | 5.75d | 0d |  | Rob; Robert |  |  |  |
| 27 | 2.1.4 | Add pagination to tables (e.g. schedule log table) |  | 5h | 2010-02-11 15:00 | 2010-02-15 15:30 | 26 |  |  | 5.75d | 0d |  | Rob | 5h |  | 20 |
| 28 | 2.1.5 | Add image copying to batch file/job scheduling |  | 3h | 2010-02-15 15:30 | 2010-02-17 16:30 | 27 |  |  | 5.75d |  |  | Rob | 3h |  | 12 |

| ID | WBS | Task | Type | Duration | Start | Finish | Predecessors | Total slack | Free slack | Constraint | Resources | Work | Text1 |
| --- | --- | --- | --- | --- | --- | --- | --- | --- | --- | --- | --- | --- | --- |
| 29 | 2.2 | **Telescope-controlling application** |  | 1.25d | 2010-02-10 14:30 | 2010-02-11 17:30 |  | 7.12d | 1.38d |  |  | 5h | 16 |
| 30 | 2.2.1 | Create test program to handle image taking with specific parameters |  | 4.5h | 2010-02-10 14:30 | 2010-02-11 17:00 |  | 7.12d | 0d | start no earlier than 2010-02-10 08:00 | Robert | 4.5h | 18 |
| 31 | 2.2.2 | Integrate camera to telescope-controlling application |  | 0.5h | 2010-02-11 17:00 | 2010-02-11 17:30 | 30 | 7.12d | 0d |  | Robert | 0.5h |  |
| 32 | 2.2.3 | Hardware interfacing completed | milestone | 0d | 2010-02-11 17:30 | 2010-02-11 17:30 | 31, 13, 14, 30 | 7.12d |  |  | Rob; Robert |  |  |
| 33 | 2.3 | **Documentation** |  | 4d | 2010-02-04 14:30 | 2010-02-17 15:30 |  | 6d | 0.25d |  |  | 47.5h | 16 |
| 34 | 2.3.1 | Update documentation |  | 16h | 2010-02-04 14:30 | 2010-02-17 15:30 | 20 | 6d |  |  | Rob; Robert | 32h | 64 |
| 35 | 2.3.2 | More metrics gathering |  | 2h | 2010-02-04 14:30 | 2010-02-04 16:30 | 18 | 9.5d |  |  | Robert | 2h |  |
| 36 | 2.3.3 | Create unit tests for telescope-controlling application |  | 2.5h | 2010-02-04 14:30 | 2010-02-04 17:00 | 12 | 9.38d | 5.12d |  | Robert | 2.5h | 10 |
| 37 | 2.3.4 | Create class diagram for telescope-controlling application |  | 1h | 2010-02-04 14:30 | 2010-02-04 15:30 | 17 | 7.25d | 0d |  | Robert | 1h |  |
| 38 | 2.3.5 | Create sequence diagrams for telescope-controlling application |  | 2h | 2010-02-04 15:30 | 2010-02-04 17:30 | 37 | 7.25d | 0d |  | Robert | 2h |  |
| 39 | 2.3.6 | Create system-sequence diagrams |  | 2h | 2010-02-04 17:30 | 2010-02-08 15:00 | 38 | 7.25d | 0d |  | Robert | 2h |  |
| 40 | 2.3.7 | Create activity diagrams |  | 3h | 2010-02-08 15:00 | 2010-02-10 16:00 | 39 | 7.25d | 0d |  | Robert | 3h | 12 |
| 41 | 2.3.8 | Create state diagrams |  | 3h | 2010-02-10 16:00 | 2010-02-11 17:00 | 40 | 7.25d | 3d |  | Robert | 3h | 12 |
| 42 | 2.4 | Release #5: Automated Image Gathering | milestone | 0d | 2010-02-18 08:00 | 2010-02-18 08:00 | 23, 29, 33 | 5.75d | 0d | start no earlier than 2010-02-18 08:00 | Rob; Robert |  |  |
| 44 | 3 | **Iteration 7: Release #6: Automated Composite Image Compilation** |  | 2.12d | 2010-02-18 14:30 | 2010-02-25 08:00 | 22 | 5.5d | 0d |  |  | 27.5h | 16 |
| 45 | 3.1 | **Web system** |  | 1.75d | 2010-02-18 14:30 | 2010-02-24 15:00 |  | 5.88d | 0.38d |  |  | 7h | 16 |
| 46 | 3.1.1 | Install mailing server |  | 2h | 2010-02-18 14:30 | 2010-02-18 16:30 | 42 | 5.88d | 0d |  | Rob | 2h |  |
| 47 | 3.1.2 | Implement Oracle PL/SQL procedure to handle email notifications |  | 5h | 2010-02-18 16:30 | 2010-02-24 15:00 | 46 | 5.88d | 2.38d |  | Rob | 5h | 20 |
| 48 | 3.2 | **Telescope-controlling application** |  | 1.88d | 2010-02-18 14:30 | 2010-02-24 15:30 |  | 5.75d | 0.25d |  |  | 10.5h | 16 |
| 49 | 3.2.1 | Implement functionality for compiling composite images |  | 4.5h | 2010-02-18 14:30 | 2010-02-22 14:30 | 42 | 5.75d | 0d |  | Robert | 4.5h | 18 |
| 50 | 3.2.2 | Research image recognition options |  | 3h | 2010-02-22 14:30 | 2010-02-24 15:30 | 49 | 5.75d |  |  | Rob; Robert | 6h | 12 |
| 51 | 3.3 | **Documentation** |  | 1.5d | 2010-02-18 14:30 | 2010-02-22 16:00 |  | 6.12d | 0.62d |  |  | 10h | 16 |
| 52 | 3.3.1 | Update documentation |  | 4h | 2010-02-18 14:30 | 2010-02-18 18:30 | 42 | 6.12d | 0d |  | Rob; Robert | 8h | 16 |
| 53 | 3.3.2 | Create sequence diagrams for web application |  | 2h | 2010-02-22 14:00 | 2010-02-22 16:00 | 52 | 6.12d | 0d |  | Robert | 2h |  |
| 54 | 3.3.3 | All documentation created | milestone | 0d | 2010-02-22 16:00 | 2010-02-22 16:00 | 19, 36, 37, 38, 39, 40, 41, 53 | 6.12d |  |  | Rob; Robert |  |  |
| 55 | 3.4 | Release #6: Automated Composite Image Compilation | milestone | 0d | 2010-02-25 08:00 | 2010-02-25 08:00 | 45, 48, 51 | 5.5d | 0d | start no earlier than 2010-02-25 08:00 | Rob; Robert |  |  |

| ID | WBS | Task | Type | Duration | Start | Finish | Predecessors | Total slack | Free slack | Constraint | Resources | Work | Text1 |
| --- | --- | --- | --- | --- | --- | --- | --- | --- | --- | --- | --- | --- | --- |
| 57 | 4 | **Iteration 8: Release #7: Image Recognition** |  | 2.38d | 2010-02-25 14:30 | 2010-03-04 15:30 | 44 | 5.5d | 0d |  |  | 27h | 16 |
| 58 | 4.1 | **Web system** |  | 0.88d | 2010-03-01 16:00 | 2010-03-04 15:30 |  | 5.5d | 0d |  |  | 3.5h | 16 |
| 59 | 4.1.1 | Implement manual telescope positioning |  | 3.5h | 2010-03-01 16:00 | 2010-03-04 15:30 | 65 | 5.5d |  |  | Rob | 3.5h | 14 |
| 60 | 4.2 | **Telescope-controlling application** |  | 2d | 2010-02-25 14:30 | 2010-03-03 16:00 |  | 5.5d | 0.38d |  |  | 15.5h | 16 |
| 61 | 4.2.1 | Implement functionality for image recognition |  | 6h | 2010-02-25 14:30 | 2010-03-01 16:00 | 55 | 5.88d | 0d |  | Robert | 6h | 24 |
| 62 | 4.2.2 | Integrate image recognition program with telescope-controlling application |  | 1.5h | 2010-03-01 16:00 | 2010-03-03 15:30 | 61 | 6d |  |  | Robert | 1.5h |  |
| 63 | 4.2.3 | Create scheduled email job which will email operators when new objects are found |  | 2h | 2010-03-01 16:00 | 2010-03-03 16:00 | 61 | 5.88d | 0d |  | Rob | 2h |  |
| 64 | 4.2.4 | Mail notification completed | milestone | 0d | 2010-03-03 16:00 | 2010-03-03 16:00 | 46, 47, 63 | 5.88d |  |  | Rob; Robert |  |  |
| 65 | 4.2.5 | Implement ability for streaming images live to the web system |  | 6h | 2010-02-25 14:30 | 2010-03-01 16:00 | 31 | 5.5d | 0d |  | Rob | 6h | 24 |
| 66 | 4.3 | **Documentation** |  | 1d | 2010-02-25 14:30 | 2010-02-25 18:30 |  | 6.88d | 1.38d |  |  | 8h | 16 |
| 67 | 4.3.1 | Update documentation |  | 4h | 2010-02-25 14:30 | 2010-02-25 18:30 | 55 | 6.88d |  |  | Rob; Robert | 8h | 16 |
| 68 | 4.4 | Release #7: Image Recognition | milestone | 0d | 2010-03-04 15:30 | 2010-03-04 15:30 | 58, 60, 66 | 5.5d | 0d |  | Rob; Robert |  |  |
| 70 | 5 | **Iteration 9: Release #8: Refactored Final Release** |  | 11.88d | 2010-03-04 15:30 | 2010-04-07 08:00 | 57 | 0d |  |  |  | 42h | 16 |
| 71 | 5.1 | Final refactoring |  | 5h | 2010-03-04 15:30 | 2010-03-08 16:00 | 68 | 5.5d | 0d |  | Rob; Robert | 10h | 20 |
| 72 | 5.2 | Changes to schedule log filtering for mobile device views |  | 1h | 2010-03-08 16:00 | 2010-03-10 15:00 | 71 | 5.5d | 0d | start no earlier than 2010-01-28 08:00 | Rob | 1h |  |
| 73 | 5.3 | **Deployment and End Testing** |  | 2.5d | 2010-03-10 15:00 | 2010-03-17 16:30 | 72 | 5.5d | 0d |  |  | 13h | 16 |
| 74 | 5.3.1 | Fix functional tests |  | 3h | 2010-03-10 15:00 | 2010-03-11 16:00 | 68 | 5.5d | 0d | start no earlier than 2010-01-07 08:00 | Rob | 3h | 12 |
| 75 | 5.3.2 | System testing |  | 2h | 2010-03-11 16:00 | 2010-03-11 18:00 | 74 | 5.5d | 0d |  | Rob; Robert | 4h |  |
| 76 | 5.3.3 | Integration testing |  | 3h | 2010-03-11 18:00 | 2010-03-15 16:30 | 75 | 5.5d | 0d |  | Robert | 3h | 12 |
| 77 | 5.3.4 | Final user acceptance test |  | 1h | 2010-03-17 14:30 | 2010-03-17 15:30 | 76 | 5.5d | 0d |  | Rob; Robert | 2h |  |
| 78 | 5.3.5 | Deploy systems to production environment |  | 1h | 2010-03-17 15:30 | 2010-03-17 16:30 | 77 | 5.5d |  |  | Rob | 1h |  |
| 79 | 5.4 | **Documentation** |  | 1.75d | 2010-03-18 14:30 | 2010-03-24 15:00 | 73 | 5.5d | 0d |  |  | 13h | 16 |
| 80 | 5.4.1 | Finalize documentation |  | 6h | 2010-03-18 14:30 | 2010-03-22 16:00 | 68 | 5.5d | 0d |  | Rob; Robert | 12h | 24 |
| 81 | 5.4.2 | Compile final metrics and project statistics |  | 1h | 2010-03-22 16:00 | 2010-03-24 15:00 | 80 | 5.5d |  |  | Robert | 1h |  |

| ID | WBS | Task | Type | Duration | Start | Finish | Predecessors | Total slack | Constraint | Resources | Work | Text1 |
| --- | --- | --- | --- | --- | --- | --- | --- | --- | --- | --- | --- | --- |
| 82 | 5.5 | **Final Presentation** |  | 6.12d | 2010-03-24 15:00 | 2010-04-07 08:00 | 79 | 0d |  |  | 5h | 16 |
| 83 | 5.5.1 | Create PowerPoint for final presentation |  | 2.5h | 2010-03-24 15:00 | 2010-03-25 15:30 | 68 | 5.5d |  | Rob; Robert | 5h | 10 |
| 84 | 5.5.2 | Present project to OC faculty and audience | milestone | 0d | 2010-04-07 08:00 | 2010-04-07 08:00 | 83 | 0d | start no earlier than 2010-04-07 08:00 | Rob; Robert |  |  |
| 85 | 5.6 | Final release | milestone | 0d | 2010-04-07 08:00 | 2010-04-07 08:00 | 82, 73, 79 | 0d | start no earlier than 2010-03-18 08:00 | Rob; Robert |  |  |
